How a schedule from MS Project changed from version to version. A marks actual dates.

## Version 1 (saved 2011-06-20, file qnet_cronograma.mpp)

| ID | WBS | Task | Duration | Start | Finish | Predecessors | Total float | Constraint |
| --- | --- | --- | --- | --- | --- | --- | --- | --- |
| 1 | 1 | **Qnet** | 14d | 2011-08-01 | 2011-11-14 |  | 0d |  |
| 2 |  | Project start | 0d | 2011-08-01 | 2011-08-01 |  | 0d |  |
| 3 | 1.2 | **Setting enviroment** | 4.83d | 2011-08-01 | 2011-09-05 |  | 0d |  |
| 4 |  | Asignacion de Recursos | 1d | 2011-08-01 | 2011-08-01 | 2 | 0d |  |
| 5 |  | Set enviroment | 2d | 2011-08-08 | 2011-08-15 | 4 | 0d |  |
| 6 |  | Capacitación | 1.83d | 2011-08-29 | 2011-09-05 | 5 | 0d |  |
| 7 |  | Sprint 1 y 2 Planning Meeting | 0.17d | 2011-09-05 | 2011-09-05 | 3 | 0d |  |
| 8 | 1.4 | **Privacy tasks** | 0.5d | 2011-09-12 | 2011-09-12 | 7 | 0d |  |
| 9 |  | Terms and conditions | 0.25d | 2011-09-12 | 2011-09-12 |  | 0d |  |
| 10 |  | Verify terms and conditions approbal | 0.25d | 2011-09-12 | 2011-09-12 | 9 | 0d |  |
| 11 | 1.5 | **Security Improvements** | 1.5d | 2011-09-12 | 2011-09-19 | 7 | 0d |  |
| 12 |  | Password recovery feature | 1d | 2011-09-12 | 2011-09-12 |  | 0d |  |
| 13 |  | Sql injection check | 0.5d | 2011-09-19 | 2011-09-19 | 12 | 0d |  |
| 14 |  | Captcha check | 1d | 2011-09-12 | 2011-09-19 | 10 | 0d |  |
| 15 |  | End Sprint 1 | 0d | 2011-09-19 | 2011-09-19 | 11, 8 | 0d |  |
| 16 | 1.7 | **Social improvements** | 2.33d | 2011-09-19 | 2011-10-03 | 15 | 0d |  |
| 17 |  | User popularity ranking | 1d | 2011-09-19 | 2011-09-26 |  | 0d |  |
| 18 |  | Recommend to a friend function | 1.33d | 2011-09-26 | 2011-10-03 | 17 | 0d |  |
| 19 |  | Instant messages | 2.33d | 2011-09-19 | 2011-10-03 |  | 0d |  |
| 20 |  | End Sprint 2 | 0d | 2011-10-03 | 2011-10-03 | 16 | 5.17d |  |
| 21 | 1.9 | **Integracion Sprint 1 y 2** | 0.5d | 2011-10-03 | 2011-10-17 | 16 | 0d |  |
| 22 |  | Tests Sprint 1 y 2 | 0.25d | 2011-10-03 | 2011-10-17 |  | 0d |  |
| 23 |  | Correcciones Sprint 1 y 2 | 0.25d | 2011-10-17 | 2011-10-17 | 22 | 0d |  |
| 24 |  | Sprint 3 Planning Meeting | 0.17d | 2011-10-17 | 2011-10-17 | 21 | 0d |  |
| 25 | 1.11 | **Ui improvements** | 2d | 2011-10-17 | 2011-10-31 | 24 | 0d |  |
| 26 |  | Css homepage improvement | 2d | 2011-10-17 | 2011-10-31 |  | 0d |  |
| 27 |  | Css login improvement | 1d | 2011-10-17 | 2011-10-24 | 23 | 0d |  |
| 28 |  | Css content improvement | 1d | 2011-10-24 | 2011-10-31 | 27 | 0d |  |
| 29 | 1.12 | **Integracion Sprint 3** | 1d | 2011-10-31 | 2011-11-07 | 25 | 0d |  |
| 30 |  | Test Sprint 3 | 0.5d | 2011-10-31 | 2011-10-31 |  | 0d |  |
| 31 |  | Correcciones Sprint 3 | 0.5d | 2011-11-07 | 2011-11-07 | 30 | 0d |  |
| 32 |  | End Sprint 3 | 0d | 2011-11-07 | 2011-11-07 | 29 | 0d |  |
| 33 |  | Release Team Meeting | 0.17d | 2011-11-07 | 2011-11-07 | 32 | 0d |  |
| 34 |  | Reserva Developers | 1.33d | 2011-11-07 | 2011-11-14 | 33 | 0d |  |
| 35 |  | Entrega Final (fin) | 0d | 2011-11-14 | 2011-11-14 | 34 | 0d | finish no earlier than 2011-11-14 |
| 36 | 1.17 | **Management** | 13.67d | 2011-08-01 | 2011-11-14 |  | 0d |  |
| 37 |  | Project Management | 9.33d | 2011-08-01 | 2011-11-14 | 2 | 0d |  |
| 38 |  | Reserva Manager 3 | 9.33d | 2011-08-01 | 2011-11-14 | 2 | 0d |  |
| 39 |  | Reserva Manager 1 | 9.33d | 2011-08-01 | 2011-11-14 | 2 | 0d |  |
| 40 |  | Testing | 9.33d | 2011-08-01 | 2011-11-14 | 2 | 0d |  |
| 41 |  | IT Support | 9.33d | 2011-08-01 | 2011-11-14 | 2 | 0d |  |
| 42 |  | Project Status Tracking | 9.33d | 2011-08-01 | 2011-11-14 | 2 | 0d |  |
| 43 |  | Team Meeting Planning | 9.33d | 2011-08-01 | 2011-11-14 | 2 | 0d |  |

## Version 2 (saved 2011-08-28, file Qnet_Cronograma_28082011_status_1.mpp)

Note of the change: More documents

Last finish stays 2011-11-14. Complete tasks 0 → 1.

Added:

| ID | Task | Duration | Start | Finish | Predecessors | Resources |
| --- | --- | --- | --- | --- | --- | --- |
| 22 | **Miscellaneous** | 1.5d | 2011-10-17 16:00 | 2011-10-24 19:00 | 21 |  |
| 23 | Password recovery | 1.5d | 2011-10-17 16:00 | 2011-10-24 19:00 |  | dev 1 |
| 24 | Recommend to a friend | 1.5d | 2011-10-17 16:00 | 2011-10-24 19:00 |  | dev 2; dev 3 |
| 26 | Tests Sprint 3 | 0.58d | 2011-10-24 19:00 | 2011-10-31 16:30 |  | dev 1; dev 2; dev 3 |

Removed: 9 Terms and conditions; 12 Password recovery feature; 18 Recommend to a friend function; 25 Ui improvements; 26 Css homepage improvement; 27 Css login improvement; 28 Css content improvement; 30 Test Sprint 3; 32 End Sprint 3; 38 Reserva Manager 3

Changed:

| ID | Task | Start | Finish | Duration | Complete | Total float | Predecessors | Other |
| --- | --- | --- | --- | --- | --- | --- | --- | --- |
| 1 | **Qnet** | 2011-08-01 → 2011-08-01 09:00 A | 2011-11-14 → 2011-11-14 22:00 | 14d → 13d | 0% → 16% |  |  |  |
| 2 | Project start | 2011-08-01 → 2011-08-01 09:00 | 2011-08-01 → 2011-08-01 09:00 |  |  | 0d → 0.33d |  |  |
| 3 | **Setting enviroment** | 2011-08-01 → 2011-08-01 16:00 A | 2011-09-05 → 2011-09-05 21:00 | 4.83d → 3.83d | 0% → 52% |  |  |  |
| 4 | Asignacion de Recursos | 2011-08-01 → 2011-08-01 16:00 A | 2011-08-01 → 2011-08-01 18:00 A | 1d → 0.33d | 0% → 100% | 0d → none |  | resources dev 1; dev 2; dev 3; dev 4 → dev 1; dev 2; dev 3 |
| 5 | Capacitación | 2011-08-29 → 2011-08-01 18:00 A (-28d) | 2011-09-05 → 2011-09-05 21:00 | 1.83d → 1.5d | 0% → 44% |  | 6 → 4 | resources dev 1; dev 2; dev 3; dev 4 → dev 1; dev 2; dev 3 |
| 6 | Set enviroment | 2011-08-08 → 2011-08-08 16:00 A | 2011-08-15 → 2011-08-29 22:00 (+14d) |  | 0% → 50% | 0d → 0.83d | 4 → 4FS+4h | constraint none → start no earlier than 2011-08-07 16:00; resources dev 1; dev 2; dev 3; dev 4 → dev 1; dev 2; dev 3 |
| 7 | Sprint 1 y 2 Planning Meeting | 2011-09-05 → 2011-09-05 21:00 | 2011-09-05 → 2011-09-05 22:00 |  |  |  |  | resources dev 1; dev 2; dev 3; dev 4 → dev 1; dev 2; dev 3 |
| 8 | **Privacy tasks** | 2011-09-12 → 2011-09-12 16:00 | 2011-09-12 → 2011-09-12 18:00 | 0.5d → 0.33d |  |  |  |  |
| 9 | Verify terms and conditions approval | 2011-09-12 → 2011-09-12 16:00 | 2011-09-12 → 2011-09-12 18:00 | 0.25d → 0.33d |  |  | Terms and conditions → none | was named Verify terms and conditions approbal; resources dev 4; dev 3 → dev 3 |
| 10 | **Security Improvements** | 2011-09-12 → 2011-09-12 16:00 | 2011-09-19 → 2011-09-12 22:00 (-7d) | 1.5d → 1d |  |  | 7 → none |  |
| 11 | Sql injection check | 2011-09-19 → 2011-09-12 18:00 (-7d) | 2011-09-19 → 2011-09-12 22:00 (-7d) | 0.5d → 0.67d |  |  | Password recovery feature → 8 | resources dev 1; dev 2 → dev 3 |
| 12 | Captcha check | 2011-09-12 → 2011-09-12 16:00 | 2011-09-19 → 2011-09-12 22:00 (-7d) |  |  |  | 9 → 7 | resources dev 3; dev 4 → dev 1; dev 2 |
| 13 | End Sprint 1 | 2011-09-19 → 2011-09-12 22:00 (-7d) | 2011-09-19 → 2011-09-12 22:00 (-7d) |  |  |  |  |  |
| 14 | **Social improvements** | 2011-09-19 → 2011-09-19 16:00 | 2011-10-03 → 2011-09-26 22:00 (-7d) | 2.33d → 2d |  |  |  |  |
| 15 | User popularity ranking | 2011-09-19 → 2011-09-19 16:00 | 2011-09-26 → 2011-09-26 22:00 | 1d → 2d |  |  |  | resources dev 1; dev 3 → dev 2 |
| 16 | Instant messages | 2011-09-19 → 2011-09-19 16:00 | 2011-10-03 → 2011-09-26 22:00 (-7d) | 2.33d → 2d |  |  |  | resources dev 2; dev 4 → dev 1; dev 3 |
| 17 | **Integracion Sprint 1 y 2** | 2011-10-03 → 2011-10-03 16:00 | 2011-10-17 → 2011-10-03 21:00 (-14d) | 0.5d → 0.83d |  |  |  |  |
| 18 | Tests Sprint 1 y 2 | 2011-10-03 → 2011-10-03 16:00 | 2011-10-17 → 2011-10-03 18:30 (-14d) | 0.25d → 0.42d |  |  |  | resources dev 4; dev 3; dev 1; dev 2 → dev 3; dev 1; dev 2 |
| 19 | Correcciones Sprint 1 y 2 | 2011-10-17 → 2011-10-03 18:30 (-14d) | 2011-10-17 → 2011-10-03 21:00 (-14d) | 0.25d → 0.42d |  |  |  | resources dev 4; dev 3; dev 1; dev 2 → dev 3; dev 1; dev 2 |
| 20 | End Sprint 2 | 2011-10-03 → 2011-10-03 21:00 | 2011-10-03 → 2011-10-03 21:00 |  |  |  | 14 → 17 |  |
| 21 | Sprint 3 Planning Meeting | 2011-10-17 → 2011-10-03 21:00 (-14d) | 2011-10-17 → 2011-10-03 22:00 (-14d) |  |  |  |  | resources dev 1; dev 2; dev 3; dev 4 → dev 3; dev 1; dev 2 |
| 25 | **Integracion Sprint 3** | 2011-10-31 → 2011-10-24 19:00 (-7d) | 2011-11-07 → 2011-10-31 20:00 (-7d) | 1d → 1.17d |  |  | Ui improvements → 22 |  |
| 27 | Correcciones Sprint 3 | 2011-11-07 → 2011-10-31 16:30 (-7d) | 2011-11-07 → 2011-10-31 20:00 (-7d) | 0.5d → 0.58d |  |  | Test Sprint 3 → 26 | resources dev 1; dev 2; dev 3; dev 4 → dev 1; dev 2; dev 3 |
| 28 | Release Meeting | 2011-11-07 → 2011-10-31 20:00 (-7d) | 2011-11-07 → 2011-10-31 22:00 (-7d) | 0.17d → 0.33d |  |  | End Sprint 3 → 25 | was named Release Team Meeting; resources dev 1; dev 2; dev 3; dev 4 → dev 1; dev 2; dev 3 |
| 29 | Reserva Developers | 2011-11-07 → 2011-11-07 16:00 | 2011-11-14 → 2011-11-14 22:00 | 1.33d → 2d |  |  |  | resources dev 1; dev 2; dev 3; dev 4 → dev 1; dev 2; dev 3 |
| 30 | Entrega Final (fin) | 2011-11-14 → 2011-11-14 22:00 | 2011-11-14 → 2011-11-14 22:00 |  |  |  |  | constraint finish no earlier than 2011-11-14 → finish no earlier than 2011-11-14 22:00 |
| 31 | **Management** | 2011-08-01 → 2011-08-01 18:00 A | 2011-11-14 → 2011-11-14 22:00 | 13.67d → 12.67d | 0% → 18% |  |  |  |
| 32 | Project Management | 2011-08-01 → 2011-08-01 18:00 A | 2011-11-14 → 2011-11-14 22:00 | 9.33d → 8.67d | 0% → 15% |  |  |  |
| 33 | Reserva Manager 1 | 2011-08-01 → 2011-08-01 18:00 | 2011-11-14 → 2011-11-14 22:00 | 9.33d → 8.67d |  |  |  |  |
| 34 | Testing | 2011-08-01 → 2011-08-01 18:00 | 2011-11-14 → 2011-11-14 22:00 | 9.33d → 8.67d |  |  |  |  |
| 35 | IT Support | 2011-08-01 → 2011-08-01 18:00 A | 2011-11-14 → 2011-11-14 22:00 | 9.33d → 8.67d | 0% → 60% |  |  | resources Manager 3 [50%] → Manager 3 [65%] |
| 36 | Project Status Tracking | 2011-08-01 → 2011-08-01 18:00 A | 2011-11-14 → 2011-11-14 22:00 | 9.33d → 8.67d | 0% → 31% |  |  |  |
| 37 | Team Meeting Planning | 2011-08-01 → 2011-08-01 18:00 | 2011-11-14 → 2011-11-14 22:00 | 9.33d → 8.67d |  |  |  |  |

## Version 3 (saved 2011-09-05, file Qnet_Cronograma_04092011_status_2.mpp)

Note of the change: More documents

Last finish stays 2011-11-14.

Added:

| ID | Task | Duration | Start | Finish | Predecessors | Resources |
| --- | --- | --- | --- | --- | --- | --- |
| 8 | **Sprint 1 - Privacy & Security** | 1d | 2011-09-12 | 2011-09-12 | 7 |  |
| 35 | **Testing** | 12.67d? | 2011-08-01 | 2011-11-14 | 2 |  |
| 36 | Definición de casos de prueba 1 | 1.33d? | 2011-08-01 | 2011-08-08 |  | Manager 2 |
| 38 | Definición de casos de prueba 2 | 1.5d? | 2011-09-12 | 2011-09-26 | 37 | Manager 2 |
| 39 | Testing 2 | 1.5d | 2011-09-26 | 2011-10-17 | 38 | Manager 2 |
| 40 | Definición de casos de prueba 3 | 1.5d? | 2011-10-17 | 2011-10-31 | 39 | Manager 2 |
| 41 | Testing 3 | 1.5d | 2011-10-31 | 2011-11-14 | 40 | Manager 2 |

Changed:

| ID | Task | Start | Finish | Duration | Predecessors | Other |
| --- | --- | --- | --- | --- | --- | --- |
| 1 | **Qnet** | 2011-08-01 09:00 A → 2011-08-01 A | 2011-11-14 22:00 → 2011-11-14 | 13d → 13d? |  |  |
| 2 | Project start | 2011-08-01 09:00 → 2011-08-01 | 2011-08-01 09:00 → 2011-08-01 |  |  |  |
| 3 | **Setting enviroment** | 2011-08-01 16:00 A → 2011-08-01 A | 2011-09-05 21:00 → 2011-09-05 |  |  |  |
| 4 | Asignacion de Recursos | 2011-08-01 16:00 A → 2011-08-01 A | 2011-08-01 18:00 A → 2011-08-01 A |  |  |  |
| 5 | Capacitación | 2011-08-01 18:00 A → 2011-08-01 A | 2011-09-05 21:00 → 2011-09-05 |  |  |  |
| 6 | Set enviroment | 2011-08-08 16:00 A → 2011-08-08 A | 2011-08-29 22:00 → 2011-08-29 |  |  | constraint start no earlier than 2011-08-07 16:00 → start no earlier than 2011-08-07 |
| 7 | Sprint 1 y 2 Planning Meeting | 2011-09-05 21:00 → 2011-09-05 | 2011-09-05 22:00 → 2011-09-05 |  |  |  |
| 9 | **Privacy tasks** | 2011-09-12 16:00 → 2011-09-12 | 2011-09-12 18:00 → 2011-09-12 |  | 7 → none |  |
| 10 | Verify terms and conditions approval | 2011-09-12 16:00 → 2011-09-12 | 2011-09-12 18:00 → 2011-09-12 |  |  |  |
| 11 | **Security Improvements** | 2011-09-12 16:00 → 2011-09-12 | 2011-09-12 22:00 → 2011-09-12 |  |  |  |
| 12 | Sql injection check | 2011-09-12 18:00 → 2011-09-12 | 2011-09-12 22:00 → 2011-09-12 |  |  |  |
| 13 | Captcha check | 2011-09-12 16:00 → 2011-09-12 | 2011-09-12 22:00 → 2011-09-12 |  |  |  |
| 14 | End Sprint 1 | 2011-09-12 22:00 → 2011-09-12 | 2011-09-12 22:00 → 2011-09-12 |  |  |  |
| 15 | **Sprint 2 - Social improvements** | 2011-09-19 16:00 → 2011-09-19 | 2011-09-26 22:00 → 2011-09-26 |  |  | was named Social improvements |
| 16 | User popularity ranking | 2011-09-19 16:00 → 2011-09-19 | 2011-09-26 22:00 → 2011-09-26 |  |  |  |
| 17 | Instant messages | 2011-09-19 16:00 → 2011-09-19 | 2011-09-26 22:00 → 2011-09-26 |  |  |  |
| 18 | **Integracion Sprint 1 y 2** | 2011-10-03 16:00 → 2011-10-03 | 2011-10-03 21:00 → 2011-10-03 |  |  |  |
| 19 | Tests Sprint 1 y 2 | 2011-10-03 16:00 → 2011-10-03 | 2011-10-03 18:30 → 2011-10-03 |  |  |  |
| 20 | Correcciones Sprint 1 y 2 | 2011-10-03 18:30 → 2011-10-03 | 2011-10-03 21:00 → 2011-10-03 |  |  |  |
| 21 | End Sprint 2 | 2011-10-03 21:00 → 2011-10-03 | 2011-10-03 21:00 → 2011-10-03 |  |  |  |
| 22 | Sprint 3 Planning Meeting | 2011-10-03 21:00 → 2011-10-03 | 2011-10-03 22:00 → 2011-10-03 |  |  |  |
| 23 | **Sprint 3 - Miscellaneous** | 2011-10-17 16:00 → 2011-10-17 | 2011-10-24 19:00 → 2011-10-24 |  |  | was named Miscellaneous |
| 24 | Password recovery | 2011-10-17 16:00 → 2011-10-17 | 2011-10-24 19:00 → 2011-10-24 |  |  |  |
| 25 | Recommend to a friend | 2011-10-17 16:00 → 2011-10-17 | 2011-10-24 19:00 → 2011-10-24 |  |  |  |
| 26 | **Integracion Sprint 3** | 2011-10-24 19:00 → 2011-10-24 | 2011-10-31 20:00 → 2011-10-31 |  |  |  |
| 27 | Tests Sprint 3 | 2011-10-24 19:00 → 2011-10-24 | 2011-10-31 16:30 → 2011-10-31 |  |  |  |
| 28 | Correcciones Sprint 3 | 2011-10-31 16:30 → 2011-10-31 | 2011-10-31 20:00 → 2011-10-31 |  |  |  |
| 29 | Release Meeting | 2011-10-31 20:00 → 2011-10-31 | 2011-10-31 22:00 → 2011-10-31 |  |  |  |
| 30 | Reserva Developers | 2011-11-07 16:00 → 2011-11-07 | 2011-11-14 22:00 → 2011-11-14 |  |  |  |
| 31 | Entrega Final (fin) | 2011-11-14 22:00 → 2011-11-14 | 2011-11-14 22:00 → 2011-11-14 |  |  | constraint finish no earlier than 2011-11-14 22:00 → finish no earlier than 2011-11-14 |
| 32 | **Management** | 2011-08-01 18:00 A → 2011-08-01 A | 2011-11-14 22:00 → 2011-11-14 | 12.67d → 12.67d? |  |  |
| 33 | Project Management | 2011-08-01 18:00 A → 2011-08-01 A | 2011-11-14 22:00 → 2011-11-14 |  |  |  |
| 34 | Reserva Manager 1 | 2011-08-01 18:00 → 2011-08-01 | 2011-11-14 22:00 → 2011-11-14 |  |  |  |
| 37 | Testing 1 | 2011-08-01 18:00 → 2011-08-29 (+28d) | 2011-11-14 22:00 → 2011-09-05 (-70d) | 8.67d → 1.33d | 2 → 36 | was named Testing |
| 42 | IT Support | 2011-08-01 18:00 A → 2011-08-01 A | 2011-11-14 22:00 → 2011-11-14 |  |  |  |
| 43 | Project Status Tracking | 2011-08-01 18:00 A → 2011-08-01 A | 2011-11-14 22:00 → 2011-11-14 |  |  |  |
| 44 | Team Meeting Planning | 2011-08-01 18:00 → 2011-08-01 | 2011-11-14 22:00 → 2011-11-14 |  |  |  |

## Version 4 (saved 2011-09-26, file Qnet-Cronograma-26092011.mpp)

Note of the change: Update documents

Last finish 2011-11-14 → 2011-12-12 (+28d). Complete tasks 1 → 8.

Changed:

| ID | Task | Start | Finish | Duration | Complete | Total float | Predecessors | Other |
| --- | --- | --- | --- | --- | --- | --- | --- | --- |
| 1 | **Qnet** |  | 2011-11-14 → 2011-12-12 (+28d) | 13d? → 16.17d? | 16% → 40% | 0d → 0.17d |  |  |
| 3 | **Setting enviroment** |  | 2011-09-05 A |  | 52% → 100% | 0d → none |  |  |
| 4 | Asignacion de Recursos |  |  |  |  |  |  | resources dev 1; dev 2; dev 3 → Damin; Pablo; Martin |
| 5 | Capacitación |  | 2011-09-05 A |  | 44% → 100% | 0d → none |  | resources dev 1; dev 2; dev 3 → Damin; Pablo; Martin |
| 6 | Set enviroment |  | 2011-08-29 A |  | 50% → 100% | 0.83d → none |  | resources dev 1; dev 2; dev 3 → Damin; Pablo; Martin |
| 7 | Sprint 1 y 2 Planning Meeting | 2011-09-05 A |  |  | 0% → 50% | 0d → 12.17d |  | resources dev 1; dev 2; dev 3 → Damin; Pablo; Martin |
| 8 | **Sprint 1 - Privacy & Security** | 2011-09-12 A | 2011-09-12 → 2011-09-19 A (+7d) | 1d → 1.08d | 0% → 100% | 0d → none |  |  |
| 9 | **Privacy tasks** | 2011-09-12 A | 2011-09-12 A |  | 0% → 100% | 0d → none |  |  |
| 10 | Verify terms and conditions approval | 2011-09-12 A | 2011-09-12 A |  | 0% → 100% | 0d → none |  | resources dev 3 → Martin; Damin |
| 11 | **Security Improvements** | 2011-09-12 A | 2011-09-12 → 2011-09-19 A (+7d) | 1d → 1.08d | 0% → 100% | 0d → none |  |  |
| 12 | Sql injection check | 2011-09-12 A | 2011-09-12 A | 0.67d → 0.42d | 0% → 100% | 0d → none |  | resources dev 3 → Martin; Damin |
| 13 | Captcha check | 2011-09-12 A | 2011-09-12 → 2011-09-19 A (+7d) | 1d → 1.08d | 0% → 100% | 0d → none |  | resources dev 1; dev 2 → Pablo |
| 14 | End Sprint 1 | 2011-09-12 → 2011-09-19 (+7d) | 2011-09-12 → 2011-09-19 (+7d) |  |  | 0d → 4.08d |  |  |
| 15 | **Sprint 2 - Social improvements** | 2011-09-19 A | 2011-09-26 → 2011-10-03 (+7d) |  | 0% → 25% | 0d → 3.08d |  |  |
| 16 | User popularity ranking | 2011-09-19 A | 2011-09-26 → 2011-10-03 (+7d) |  | 0% → 50% | 0d → 3.08d |  | resources dev 2 → Pablo |
| 17 | Instant messages |  | 2011-09-26 → 2011-10-03 (+7d) |  |  | 0d → 3.08d |  | resources dev 1; dev 3 → Damin; Martin |
| 19 | Tests Sprint 1 y 2 |  |  |  |  | 0d → 3.08d |  | resources dev 3; dev 1; dev 2 → Martin; Damin; Pablo |
| 20 | Correcciones Sprint 1 y 2 |  |  |  |  | 0d → 3.08d |  | resources dev 3; dev 1; dev 2 → Martin; Damin; Pablo |
| 22 | Sprint 3 Planning Meeting |  | 2011-10-03 → 2011-10-17 (+14d) |  |  | 0d → 3.25d |  | resources dev 3; dev 1; dev 2 → Martin; Damin; Pablo |
| 24 | Password recovery |  |  |  |  | 0d → 3.25d |  | resources dev 1 → Damin |
| 25 | Recommend to a friend |  |  |  |  | 0d → 3.25d |  | resources dev 2; dev 3 → Pablo; Martin |
| 27 | Tests Sprint 3 |  |  |  |  | 0d → 3.25d |  | resources dev 1; dev 2; dev 3 → Damin; Pablo; Martin |
| 28 | Correcciones Sprint 3 |  |  |  |  | 0d → 3.25d |  | resources dev 1; dev 2; dev 3 → Damin; Pablo; Martin |
| 29 | Release Meeting |  | 2011-10-31 → 2011-11-07 (+7d) |  |  | 0d → 3.25d |  | resources dev 1; dev 2; dev 3 → Damin; Pablo; Martin |
| 30 | Reserva Developers |  | 2011-11-14 → 2011-11-21 (+7d) |  |  | 0d → 3.25d |  | resources dev 1; dev 2; dev 3 → Damin; Pablo; Martin |
| 31 | Entrega Final (fin) | 2011-11-14 → 2011-11-21 (+7d) | 2011-11-14 → 2011-11-21 (+7d) |  |  | 0d → 3.25d |  |  |
| 32 | **Management** |  | 2011-11-14 → 2011-12-12 (+28d) | 12.67d? → 15.83d? | 18% → 40% |  |  |  |
| 33 | Project Management |  | 2011-11-14 → 2011-10-31 (-14d) | 8.67d → 6.97d | 15% → 37% | 0d → 5.53d |  |  |
| 34 | Reserva Manager 1 | 2011-08-01 A |  |  | 0% → 11% | 0d → 3.17d |  |  |
| 35 | **Testing** | 2011-08-01 → 2011-09-05 A (+35d) | 2011-11-14 → 2011-12-12 (+28d) | 12.67d? → 12.33d? | 0% → 15% |  | 2 → 3 |  |
| 36 | Definición de casos de prueba 1 | 2011-08-01 → 2011-09-05 A (+35d) | 2011-08-08 → 2011-09-19 A (+42d) |  | 0% → 100% | 0d → none |  |  |
| 37 | Testing 1 | 2011-08-29 → 2011-09-19 (+21d) | 2011-09-05 → 2011-10-03 (+28d) |  |  |  |  |  |
| 38 | Definición de casos de prueba 2 | 2011-09-12 → 2011-10-03 (+21d) | 2011-09-26 → 2011-10-24 (+28d) |  |  |  |  |  |
| 39 | Testing 2 | 2011-09-26 → 2011-10-31 (+35d) | 2011-10-17 → 2011-11-14 (+28d) |  |  |  |  |  |
| 40 | Definición de casos de prueba 3 | 2011-10-17 → 2011-11-14 (+28d) | 2011-10-31 → 2011-11-28 (+28d) |  |  |  |  |  |
| 41 | Testing 3 | 2011-10-31 → 2011-11-28 (+28d) | 2011-11-14 → 2011-12-12 (+28d) |  |  |  |  |  |
| 42 | IT Support |  | 2011-11-14 A | 8.67d → 8.46d | 60% → 100% | 0d → none |  |  |
| 43 | Project Status Tracking |  |  |  | 31% → 45% | 0d → 3.17d |  |  |
| 44 | Team Meeting Planning | 2011-08-01 A |  |  | 0% → 33% | 0d → 3.17d |  |  |
