How a schedule from MS Project changed from version to version. A marks actual dates.

## Version 1 (saved 2011-10-18)

Note of the change: Preliminary 24.10 documents

| ID | WBS | Task | Duration | Start | Finish | Predecessors | Complete | Total float | Constraint |
| --- | --- | --- | --- | --- | --- | --- | --- | --- | --- |
| 1 | 1 | **Qnet** | 13d? | 2011-08-01 09:00 A | 2011-11-14 22:00 |  | 66% | 0d |  |
| 2 |  | Project start | 0d | 2011-08-01 09:00 | 2011-08-01 09:00 |  |  | 6.62d |  |
| 3 | 1.2 | **Setting enviroment** | 3.83d | 2011-08-01 16:00 A | 2011-09-05 21:00 A |  | 100% |  |  |
| 4 |  | Asignacion de Recursos | 0.33d | 2011-08-01 16:00 A | 2011-08-01 18:00 A | 2 | 100% |  |  |
| 5 |  | Capacitación | 1.5d | 2011-08-01 18:00 A | 2011-09-05 21:00 A | 4 | 100% |  |  |
| 6 |  | Set enviroment | 2d | 2011-08-08 16:00 A | 2011-08-29 22:00 A | 4FS+4h | 100% |  | start no earlier than 2011-08-07 16:00 |
| 7 |  | Sprint 1 y 2 Planning Meeting | 0.17d | 2011-09-05 21:00 A | 2011-09-05 22:00 | 3 | 50% | 9d |  |
| 8 | 1.4 | **Sprint 1 - Privacy & Security** | 1d | 2011-09-12 16:00 A | 2011-09-12 22:00 A | 7 | 100% |  |  |
| 9 | 1.4.1 | **Privacy tasks** | 0.33d | 2011-09-12 16:00 A | 2011-09-12 18:00 A |  | 100% |  |  |
| 10 |  | Verify terms and conditions approval | 0.33d | 2011-09-12 16:00 A | 2011-09-12 18:00 A |  | 100% |  |  |
| 11 | 1.4.2 | **Security Improvements** | 1d | 2011-09-12 16:00 A | 2011-09-12 22:00 A |  | 100% |  |  |
| 12 |  | Sql injection check | 0.42d | 2011-09-12 18:30 A | 2011-09-12 21:00 A | 9 | 100% |  |  |
| 13 |  | Captcha check | 1d | 2011-09-12 16:00 A | 2011-09-12 22:00 A | 7 | 100% |  |  |
| 14 |  | End Sprint 1 | 0d | 2011-09-12 22:00 | 2011-09-12 22:00 | 11, 9 |  | 8d |  |
| 15 | 1.6 | **Sprint 2 - Social improvements** | 2d | 2011-09-19 16:00 A | 2011-09-26 22:00 A | 14 | 100% |  |  |
| 16 |  | User popularity ranking | 2d | 2011-09-19 16:00 A | 2011-09-26 22:00 A |  | 100% |  |  |
| 17 |  | Instant messages | 1d | 2011-09-26 16:00 A | 2011-09-26 22:00 A |  | 100% |  | start no earlier than 2011-09-26 16:00 |
| 18 | 1.7 | **Integracion Sprint 1 y 2** | 12h | 2011-10-03 16:00 A | 2011-10-17 22:00 | 15 | 100% |  |  |
| 19 |  | Tests Sprint 1 y 2 | 0.42d | 2011-10-03 16:00 A | 2011-10-03 18:30 A |  | 100% |  |  |
| 20 |  | Correcciones Sprint 1 y 2 | 0.75d | 2011-10-03 18:30 A | 2011-10-17 17:00 A | 19 | 100% |  |  |
| 21 |  | End Sprint 2 | 0d | 2011-10-17 22:00 A | 2011-10-17 22:00 A | 18 | 100% |  |  |
| 22 |  | Sprint 3 Planning Meeting | 0.17d | 2011-10-03 21:00 A | 2011-10-03 22:00 A |  | 100% |  |  |
| 23 | 1.10 | **Sprint 3 - Miscellaneous** | 0.83d | 2011-10-17 16:00 | 2011-10-17 21:00 | 22 |  | 0.17d |  |
| 24 |  | Password recovery | 0.83d | 2011-10-17 16:00 | 2011-10-17 21:00 |  |  | 0.17d |  |
| 25 |  | Recommend to a friend | 0.83d | 2011-10-17 16:00 | 2011-10-17 21:00 |  |  | 0.17d |  |
| 26 | 1.11 | **Integracion Sprint 3** | 1.16d | 2011-10-24 16:00 | 2011-10-31 16:58 | 23 |  |  |  |
| 27 |  | Tests Sprint 3 | 0.58d | 2011-10-24 16:00 | 2011-10-24 19:28 |  |  | 0d |  |
| 28 |  | Correcciones Sprint 3 | 0.58d | 2011-10-24 19:28 | 2011-10-31 16:58 | 27 |  | 0d |  |
| 29 |  | Release Meeting | 0.33d | 2011-10-31 16:58 | 2011-10-31 18:58 | 26 |  | 0.5d |  |
| 30 |  | Reserva Developers | 2d | 2011-10-31 18:58 | 2011-11-14 18:58 | 29 |  | 0.5d |  |
| 31 |  | Entrega Final (fin) | 0d | 2011-11-14 16:00 | 2011-11-14 16:00 |  |  | 1d | start no earlier than 2011-11-14 16:00 |
| 32 | 1.15 | **Management** | 12.67d | 2011-08-01 18:00 A | 2011-11-14 22:00 |  | 66% | 0d |  |
| 33 |  | Project Management | 8d | 2011-08-01 18:00 A | 2011-11-14 22:00 | 2 | 58% | 0d | finish no earlier than 2011-11-14 22:00 |
| 34 |  | Reserva Managers | 8d | 2011-08-01 18:00 A | 2011-11-14 22:00 | 2 | 58% | 0d | finish no earlier than 2011-11-14 22:00 |
| 35 |  | Reserva Mariano | 12h | 2011-10-31 18:00 | 2011-11-14 22:00 |  |  | 0d | start no earlier than 2011-10-31 16:00 |
| 36 | 1.15.4 | **Testing** | 9.17d | 2011-09-05 21:00 | 2011-11-14 22:00 | 3 | 83% |  |  |
| 37 |  | Definición de casos de prueba 1 | 1.33d? | 2011-09-05 18:00 A | 2011-09-12 22:00 A |  | 100% |  | start no earlier than 2011-09-05 16:00 |
| 38 |  | Testing 1 | 0.67d | 2011-09-26 18:00 A | 2011-09-26 22:00 A | 37 | 100% |  | start no earlier than 2011-09-26 16:00 |
| 39 |  | Definición de casos de prueba 2 | 0.33d? | 2011-10-03 18:00 A | 2011-10-03 20:00 A | 38 | 100% |  | start no earlier than 2011-09-26 16:00 |
| 40 |  | Testing 2 | 0.33d | 2011-10-03 18:00 A | 2011-10-03 20:00 A |  | 100% |  | start no earlier than 2011-10-03 16:00 |
| 41 |  | Definición de casos de prueba 3 | 0.67d? | 2011-10-17 18:00 A | 2011-10-17 22:00 A | 40 | 100% |  | start no earlier than 2011-10-17 16:00 |
| 42 |  | Testing 3 | 0.67d | 2011-10-24 18:00 | 2011-10-24 22:00 | 41 |  | 3d | start no earlier than 2011-10-24 16:00 |
| 43 |  | IT Support | 8.46d | 2011-08-01 18:00 A | 2011-11-14 20:45 A | 2 | 100% |  |  |
| 44 |  | Project Status Tracking | 8.67d | 2011-08-01 18:00 A | 2011-11-14 22:00 | 2 | 85% | 0d |  |
| 45 |  | Team Meeting Planning | 8.67d | 2011-08-01 18:00 A | 2011-11-14 21:59 | 2 | 33% | 0d |  |
| 46 | 1.16 | **Faltas y tiempo improductivo** | 1d? | 2011-09-19 16:00 A | 2011-09-19 22:00 A |  | 100% |  |  |
| 47 |  | Google Developers Day | 6h? | 2011-09-19 16:00 A | 2011-09-19 22:00 A | 14 | 100% |  |  |

## Version 2 (saved 2011-10-18)

Note of the change: Pre-final version of Qnet-Cronograma-1710.mpp

Last finish stays 2011-11-14. Complete tasks 19 → 20.

Added:

| ID | Task | Duration | Start | Finish | Predecessors | Resources |
| --- | --- | --- | --- | --- | --- | --- |
| 29 | Correciones Sprint 3 Pablo y Damian | 3h | 2011-10-24 16:00 | 2011-10-24 19:00 |  | Damian; Pablo |
| 30 | Correcciones Sprint 3 Martin | 2h | 2011-10-24 16:00 | 2011-10-24 18:00 |  | Martin |
| 31 | **Sprint 2 Enhancements** | 1d? | 2011-10-31 16:58 | 2011-11-07 16:58 | 26 |  |
| 32 | Respond message | 6h? | 2011-10-31 16:58 | 2011-11-07 16:58 |  |  |
| 33 | Message Date | 2h | 2011-10-31 16:58 | 2011-10-31 18:58 |  |  |

Changed:

| ID | Task | Start | Finish | Duration | Complete | Total float | Predecessors | Other |
| --- | --- | --- | --- | --- | --- | --- | --- | --- |
| 1 | **Qnet** |  |  |  | 66% → 68% |  |  |  |
| 19 | Tests Sprint 1 y 2 |  | 2011-10-03 18:30 A → 2011-10-03 17:30 A | 0.42d → 0.25d |  |  |  |  |
| 23 | **Sprint 3 - Miscellaneous** | 2011-10-17 16:00 A | 2011-10-17 21:00 → 2011-10-24 17:00 (+7d) | 0.83d → 1.17d | 0% → 91% | 0.17d → 0.5d |  |  |
| 24 | Password recovery | 2011-10-17 16:00 → 2011-10-17 17:00 A | 2011-10-17 21:00 → 2011-10-24 17:00 (+7d) | 0.83d → 1d | 0% → 83% | 0.17d → 0.5d | none → 22FS+1h | resources Damian → Martin |
| 25 | Recommend to a friend | 2011-10-17 16:00 A | 2011-10-17 21:00 A |  | 0% → 100% | 0.17d → none |  | resources Pablo; Martin → Pablo; Damian |
| 27 | Tests Sprint 3 |  | 2011-10-24 19:28 → 2011-10-24 19:00 | 0.58d → 0.5d |  | 0d → 0.66d |  |  |
| 28 | **Correcciones Sprint 3** | 2011-10-24 19:28 → 2011-10-24 16:00 | 2011-10-31 16:58 → 2011-10-24 19:00 (-7d) | 0.58d → 0.5d |  | 0d → 0.66d | 27 → none | resources Damian; Pablo; Martin → none |
| 34 | Release Meeting | 2011-10-31 16:58 → 2011-11-07 16:58 (+7d) | 2011-10-31 18:58 → 2011-11-07 18:58 (+7d) |  |  |  | 26 → 32 |  |
| 35 | Reserva Developers | 2011-10-31 18:58 → 2011-11-07 18:58 (+7d) |  | 2d → 1d |  |  |  |  |
