How a schedule from MS Project changed from version to version. A marks actual dates.

## Version 1 (saved 2011-09-29, file Qnet-Cronograma-TomiV2.mpp)

Note of the change: Updated documents for 3/10/11 meeting

| ID | WBS | Task | Duration | Start | Finish | Predecessors | Complete | Total float | Constraint |
| --- | --- | --- | --- | --- | --- | --- | --- | --- | --- |
| 1 | 1 | **Qnet** | 13d? | 2011-08-01 09:00 A | 2011-11-14 22:00 |  | 51% | 0d |  |
| 2 |  | Project start | 0d | 2011-08-01 09:00 | 2011-08-01 09:00 |  |  | 6.62d |  |
| 3 | 1.2 | **Setting enviroment** | 3.83d | 2011-08-01 16:00 A | 2011-09-05 21:00 A |  | 100% |  |  |
| 4 |  | Asignacion de Recursos | 0.33d | 2011-08-01 16:00 A | 2011-08-01 18:00 A | 2 | 100% |  |  |
| 5 |  | Capacitación | 1.5d | 2011-08-01 18:00 A | 2011-09-05 21:00 A | 4 | 100% |  |  |
| 6 |  | Set enviroment | 2d | 2011-08-08 16:00 A | 2011-08-29 22:00 A | 4FS+4h | 100% |  | start no earlier than 2011-08-07 16:00 |
| 7 |  | Sprint 1 y 2 Planning Meeting | 0.17d | 2011-09-05 21:00 A | 2011-09-05 22:00 | 3 | 50% | 9d |  |
| 8 | 1.4 | **Sprint 1 - Privacy & Security** | 1d | 2011-09-12 16:00 A | 2011-09-12 22:00 A | 7 | 100% |  |  |
| 9 | 1.4.1 | **Privacy tasks** | 0.33d | 2011-09-12 16:00 A | 2011-09-12 18:00 A |  | 100% |  |  |
| 10 |  | Verify terms and conditions approval | 0.33d | 2011-09-12 16:00 A | 2011-09-12 18:00 A |  | 100% |  |  |
| 11 | 1.4.2 | **Security Improvements** | 1d | 2011-09-12 16:00 A | 2011-09-12 22:00 A |  | 100% |  |  |
| 12 |  | Sql injection check | 0.42d | 2011-09-12 18:30 A | 2011-09-12 21:00 A | 9 | 100% |  |  |
| 13 |  | Captcha check | 1d | 2011-09-12 16:00 A | 2011-09-12 22:00 A | 7 | 100% |  |  |
| 14 |  | End Sprint 1 | 0d | 2011-09-12 22:00 | 2011-09-12 22:00 | 11, 9 |  | 8d |  |
| 15 | 1.6 | **Sprint 2 - Social improvements** | 2d | 2011-09-19 16:00 A | 2011-09-26 22:00 A | 14 | 100% |  |  |
| 16 |  | User popularity ranking | 2d | 2011-09-19 16:00 A | 2011-09-26 22:00 A |  | 100% |  |  |
| 17 |  | Instant messages | 1d | 2011-09-26 16:00 A | 2011-09-26 22:00 A |  | 100% |  | start no earlier than 2011-09-26 16:00 |
| 18 | 1.7 | **Integracion Sprint 1 y 2** | 0.83d | 2011-10-03 16:00 | 2011-10-03 21:00 | 15 |  | 0d |  |
| 19 |  | Tests Sprint 1 y 2 | 0.42d | 2011-10-03 16:00 | 2011-10-03 18:30 |  |  | 0d |  |
| 20 |  | Correcciones Sprint 1 y 2 | 0.42d | 2011-10-03 18:30 | 2011-10-03 21:00 | 19 |  | 0d |  |
| 21 |  | End Sprint 2 | 0d | 2011-10-03 21:00 | 2011-10-03 21:00 | 18 |  | 5.17d |  |
| 22 |  | Sprint 3 Planning Meeting | 0.17d | 2011-10-03 21:00 | 2011-10-03 22:00 | 18 |  | 0d |  |
| 23 | 1.10 | **Sprint 3 - Miscellaneous** | 1.5d | 2011-10-17 16:00 | 2011-10-24 19:00 | 22 |  | 0d |  |
| 24 |  | Password recovery | 1.5d | 2011-10-17 16:00 | 2011-10-24 19:00 |  |  | 0d |  |
| 25 |  | Recommend to a friend | 1.5d | 2011-10-17 16:00 | 2011-10-24 19:00 |  |  | 0d |  |
| 26 | 1.11 | **Integracion Sprint 3** | 1.17d | 2011-10-24 19:00 | 2011-10-31 20:00 | 23 |  | 0d |  |
| 27 |  | Tests Sprint 3 | 0.58d | 2011-10-24 19:00 | 2011-10-31 16:30 |  |  | 0d |  |
| 28 |  | Correcciones Sprint 3 | 0.58d | 2011-10-31 16:30 | 2011-10-31 20:00 | 27 |  | 0d |  |
| 29 |  | Release Meeting | 0.33d | 2011-10-31 20:00 | 2011-10-31 22:00 | 26 |  | 0d |  |
| 30 |  | Reserva Developers | 2d | 2011-11-07 16:00 | 2011-11-14 22:00 | 29 |  | 0d |  |
| 31 |  | Entrega Final (fin) | 0d | 2011-11-14 16:00 | 2011-11-14 16:00 |  |  | 1d | start no earlier than 2011-11-14 16:00 |
| 32 | 1.15 | **Management** | 12.67d | 2011-08-01 18:00 A | 2011-11-14 22:00 |  | 49% | 0d |  |
| 33 |  | Project Management | 8d | 2011-08-01 18:00 A | 2011-11-14 22:00 | 2 | 50% | 0d | finish no earlier than 2011-11-14 22:00 |
| 34 |  | Reserva Managers | 8d | 2011-08-01 18:00 A | 2011-11-14 22:00 | 2 | 50% | 0d | finish no earlier than 2011-11-14 22:00 |
| 35 | 1.15.3 | **Testing** | 9.17d | 2011-09-05 21:00 | 2011-11-14 22:00 | 3 |  |  |  |
| 36 |  | Definición de casos de prueba 1 | 1.33d? | 2011-09-05 18:00 | 2011-09-12 22:00 |  |  | 1d | start no earlier than 2011-09-05 16:00 |
| 37 |  | Testing 1 | 0.67d | 2011-09-26 18:00 | 2011-09-26 22:00 | 36 |  | 0d | start no earlier than 2011-09-26 16:00 |
| 38 |  | Definición de casos de prueba 2 | 1.33d? | 2011-10-03 18:00 | 2011-10-17 22:00 | 37 |  | 0d | start no earlier than 2011-09-26 16:00 |
| 39 |  | Testing 2 | 0.67d | 2011-10-24 18:00 | 2011-10-24 22:00 | 38 |  | 0d | start no earlier than 2011-10-03 16:00 |
| 40 |  | Definición de casos de prueba 3 | 1.33d? | 2011-10-31 18:00 | 2011-11-07 22:00 | 39 |  | 0d | start no earlier than 2011-10-24 16:00 |
| 41 |  | Testing 3 | 0.67d | 2011-11-14 18:00 | 2011-11-14 22:00 | 40 |  | 0d | finish no earlier than 2011-11-14 22:00 |
| 42 |  | IT Support | 8.46d | 2011-08-01 18:00 A | 2011-11-14 20:45 A | 2 | 100% |  |  |
| 43 |  | Project Status Tracking | 8.67d | 2011-08-01 18:00 A | 2011-11-14 22:00 | 2 | 45% | 0d |  |
| 44 |  | Team Meeting Planning | 8.67d | 2011-08-01 18:00 A | 2011-11-14 21:59 | 2 | 33% | 0d |  |
| 45 | 1.16 | **Faltas y tiempo improductivo** | 1d? | 2011-09-19 16:00 A | 2011-09-19 22:00 A |  | 100% |  |  |
| 46 |  | Google Developers Day | 6h? | 2011-09-19 16:00 A | 2011-09-19 22:00 A | 14 | 100% |  |  |

## Version 2 (saved 2011-10-02, file Qnet-Cronograma.mpp)

Note of the change: Qnet-Cronograma.mpp Updated.

Last finish stays 2011-11-14. Complete tasks 10 → 12.

Added:

| ID | Task | Duration | Start | Finish | Predecessors | Constraint | Resources |
| --- | --- | --- | --- | --- | --- | --- | --- |
| 45 | Exceptional Bug Fixing for ES 26.9 | 4h | 2011-09-26 18:00 A | 2011-09-26 22:00 A | 2 | start no earlier than 2011-09-26 16:00 | Agustin [65%] |

Changed:

| ID | Task | Start | Finish | Duration | Complete | Total float | Other |
| --- | --- | --- | --- | --- | --- | --- | --- |
| 24 | Password recovery |  |  |  |  |  | resources Damian → Martin |
| 25 | Recommend to a friend |  |  |  |  |  | resources Pablo; Martin → Pablo; Damian |
| 33 | Project Management |  |  |  | 50% → 45% |  |  |
| 34 | Reserva Managers |  |  |  | 50% → 45% |  |  |
| 35 | **Testing** |  |  |  | 0% → 33% |  |  |
| 36 | Definición de casos de prueba 1 | 2011-09-05 18:00 A | 2011-09-12 22:00 A |  | 0% → 100% | 1d → none |  |
| 37 | Testing 1 | 2011-09-26 18:00 A | 2011-09-26 22:00 A |  | 0% → 100% | 0d → none |  |
| 42 | IT Support |  | 2011-11-14 20:45 A → 2011-11-14 18:36 | 8.46d → 7.44d | 100% → 85% | none → 0.56d |  |
| 43 | Project Status Tracking |  |  |  | 45% → 50% |  |  |
