How a schedule from MS Project changed from version to version. A marks actual dates.

## Version 1 (saved 2011-08-28, file Qnet_Cronograma_28082011_base.mpp)

Note of the change: More documents

| ID | WBS | Task | Duration | Start | Finish | Predecessors | Total float | Constraint |
| --- | --- | --- | --- | --- | --- | --- | --- | --- |
| 1 | 1 | **Qnet** | 13d | 2011-08-01 09:00 | 2011-11-14 22:00 |  | 0d |  |
| 2 |  | Project start | 0d | 2011-08-01 09:00 | 2011-08-01 09:00 |  | 0d |  |
| 3 | 1.2 | **Setting enviroment** | 3.83d | 2011-08-01 16:00 | 2011-09-05 21:00 |  | 0d |  |
| 4 |  | Asignacion de Recursos | 0.33d | 2011-08-01 16:00 | 2011-08-01 18:00 | 2 | 0d |  |
| 5 |  | Capacitación | 1.5d | 2011-08-01 18:00 | 2011-08-08 21:00 | 4 | 0d |  |
| 6 |  | Set enviroment | 2d | 2011-08-08 21:00 | 2011-09-05 21:00 | 5 | 0d |  |
| 7 |  | Sprint 1 y 2 Planning Meeting | 0.17d | 2011-09-05 21:00 | 2011-09-05 22:00 | 3 | 0d |  |
| 8 | 1.4 | **Privacy tasks** | 0.33d | 2011-09-12 16:00 | 2011-09-12 18:00 | 7 | 0d |  |
| 9 |  | Verify terms and conditions approbal | 0.33d | 2011-09-12 16:00 | 2011-09-12 18:00 |  | 0d |  |
| 10 | 1.5 | **Security Improvements** | 1d | 2011-09-12 16:00 | 2011-09-12 22:00 |  | 0d |  |
| 11 |  | Sql injection check | 0.67d | 2011-09-12 18:00 | 2011-09-12 22:00 | 8 | 0d |  |
| 12 |  | Captcha check | 1d | 2011-09-12 16:00 | 2011-09-12 22:00 | 7 | 0d |  |
| 13 |  | End Sprint 1 | 0d | 2011-09-12 22:00 | 2011-09-12 22:00 | 10, 8 | 0d |  |
| 14 | 1.7 | **Social improvements** | 2d | 2011-09-19 16:00 | 2011-09-26 22:00 | 13 | 0d |  |
| 15 |  | User popularity ranking | 2d | 2011-09-19 16:00 | 2011-09-26 22:00 |  | 0d |  |
| 16 |  | Instant messages | 2d | 2011-09-19 16:00 | 2011-09-26 22:00 |  | 0d |  |
| 17 | 1.8 | **Integracion Sprint 1 y 2** | 0.83d | 2011-10-03 16:00 | 2011-10-03 21:00 | 14 | 0d |  |
| 18 |  | Tests Sprint 1 y 2 | 0.42d | 2011-10-03 16:00 | 2011-10-03 18:30 |  | 0d |  |
| 19 |  | Correcciones Sprint 1 y 2 | 0.42d | 2011-10-03 18:30 | 2011-10-03 21:00 | 18 | 0d |  |
| 20 |  | End Sprint 2 | 0d | 2011-10-03 21:00 | 2011-10-03 21:00 | 17 | 5.17d |  |
| 21 |  | Sprint 3 Planning Meeting | 0.17d | 2011-10-03 21:00 | 2011-10-03 22:00 | 17 | 0d |  |
| 22 | 1.11 | **Miscellaneous** | 1.5d | 2011-10-17 16:00 | 2011-10-24 19:00 | 21 | 0d |  |
| 23 |  | Password recovery | 1.5d | 2011-10-17 16:00 | 2011-10-24 19:00 |  | 0d |  |
| 24 |  | Recomment to a friend | 1.5d | 2011-10-17 16:00 | 2011-10-24 19:00 |  | 0d |  |
| 25 | 1.12 | **Integracion Sprint 3** | 1.17d | 2011-10-24 19:00 | 2011-10-31 20:00 | 22 | 0d |  |
| 26 |  | Tests Sprint 3 | 0.58d | 2011-10-24 19:00 | 2011-10-31 16:30 |  | 0d |  |
| 27 |  | Correcciones Sprint 3 | 0.58d | 2011-10-31 16:30 | 2011-10-31 20:00 | 26 | 0d |  |
| 28 |  | Release Meeting | 0.33d | 2011-10-31 20:00 | 2011-10-31 22:00 | 25 | 0d |  |
| 29 |  | Reserva Developers | 2d | 2011-11-07 16:00 | 2011-11-14 22:00 | 28 | 0d |  |
| 30 |  | Entrega Final (fin) | 0d | 2011-11-14 22:00 | 2011-11-14 22:00 | 29 | 0d | finish no earlier than 2011-11-14 22:00 |
| 31 | 1.16 | **Management** | 12.67d | 2011-08-01 18:00 | 2011-11-14 22:00 |  | 0d |  |
| 32 |  | Project Management | 8.67d | 2011-08-01 18:00 | 2011-11-14 22:00 | 2 | 0d |  |
| 33 |  | Reserva Manager 1 | 8.67d | 2011-08-01 18:00 | 2011-11-14 22:00 | 2 | 0d |  |
| 34 |  | Testing | 8.67d | 2011-08-01 18:00 | 2011-11-14 22:00 | 2 | 0d |  |
| 35 |  | IT Support | 8.67d | 2011-08-01 18:00 | 2011-11-14 22:00 | 2 | 0d |  |
| 36 |  | Project Status Tracking | 8.67d | 2011-08-01 18:00 | 2011-11-14 22:00 | 2 | 0d |  |
| 37 |  | Team Meeting Planning | 8.67d | 2011-08-01 18:00 | 2011-11-14 22:00 | 2 | 0d |  |

## Version 2 (saved 2011-09-05, file Qnet - Cronograma - 05092011.mpp)

Note of the change: se actualiza el cronograma

Last finish stays 2011-11-14. Complete tasks 0 → 2.

Added:

| ID | Task | Duration | Start | Finish | Predecessors | Resources |
| --- | --- | --- | --- | --- | --- | --- |
| 8 | **Sprint 1 - Privacy & Security** | 1d | 2011-09-12 | 2011-09-12 | 7 |  |
| 35 | **Testing** | 12.67d? | 2011-08-01 | 2011-11-14 | 2 |  |
| 36 | Definición de casos de prueba 1 | 1.33d? | 2011-08-01 | 2011-08-08 |  | Manager 2 |
| 38 | Definición de casos de prueba 2 | 1.5d? | 2011-09-12 | 2011-09-26 | 37 | Manager 2 |
| 39 | Testing 2 | 1.5d | 2011-09-26 | 2011-10-17 | 38 | Manager 2 |
| 40 | Definición de casos de prueba 3 | 1.5d? | 2011-10-17 | 2011-10-31 | 39 | Manager 2 |
| 41 | Testing 3 | 1.5d | 2011-10-31 | 2011-11-14 | 40 | Manager 2 |

Changed:

| ID | Task | Start | Finish | Duration | Complete | Total float | Predecessors | Other |
| --- | --- | --- | --- | --- | --- | --- | --- | --- |
| 1 | **Qnet** | 2011-08-01 09:00 → 2011-08-01 A | 2011-11-14 22:00 → 2011-11-14 | 13d → 13d? | 0% → 18% |  |  |  |
| 2 | Project start | 2011-08-01 09:00 → 2011-08-01 | 2011-08-01 09:00 → 2011-08-01 |  |  | 0d → 0.33d |  |  |
| 3 | **Setting enviroment** | 2011-08-01 16:00 → 2011-08-01 A | 2011-09-05 21:00 → 2011-09-05 |  | 0% → 78% |  |  |  |
| 4 | Asignacion de Recursos | 2011-08-01 16:00 → 2011-08-01 A | 2011-08-01 18:00 → 2011-08-01 A |  | 0% → 100% | 0d → none |  |  |
| 5 | Capacitación | 2011-08-01 18:00 → 2011-08-01 A | 2011-08-08 21:00 → 2011-09-05 (+28d) |  | 0% → 44% |  |  |  |
| 6 | Set enviroment | 2011-08-08 21:00 → 2011-08-08 A | 2011-09-05 21:00 → 2011-08-29 A (-7d) |  | 0% → 100% | 0d → none | 5 → 4FS+4h | constraint none → start no earlier than 2011-08-07 |
| 7 | Sprint 1 y 2 Planning Meeting | 2011-09-05 21:00 → 2011-09-05 | 2011-09-05 22:00 → 2011-09-05 |  |  |  |  |  |
| 9 | **Privacy tasks** | 2011-09-12 16:00 → 2011-09-12 | 2011-09-12 18:00 → 2011-09-12 |  |  |  | 7 → none |  |
| 10 | Verify terms and conditions approval | 2011-09-12 16:00 → 2011-09-12 | 2011-09-12 18:00 → 2011-09-12 |  |  |  |  | was named Verify terms and conditions approbal |
| 11 | **Security Improvements** | 2011-09-12 16:00 → 2011-09-12 | 2011-09-12 22:00 → 2011-09-12 |  |  |  |  |  |
| 12 | Sql injection check | 2011-09-12 18:00 → 2011-09-12 | 2011-09-12 22:00 → 2011-09-12 |  |  |  |  |  |
| 13 | Captcha check | 2011-09-12 16:00 → 2011-09-12 | 2011-09-12 22:00 → 2011-09-12 |  |  |  |  |  |
| 14 | End Sprint 1 | 2011-09-12 22:00 → 2011-09-12 | 2011-09-12 22:00 → 2011-09-12 |  |  |  |  |  |
| 15 | **Sprint 2 - Social improvements** | 2011-09-19 16:00 → 2011-09-19 | 2011-09-26 22:00 → 2011-09-26 |  |  |  |  | was named Social improvements |
| 16 | User popularity ranking | 2011-09-19 16:00 → 2011-09-19 | 2011-09-26 22:00 → 2011-09-26 |  |  |  |  |  |
| 17 | Instant messages | 2011-09-19 16:00 → 2011-09-19 | 2011-09-26 22:00 → 2011-09-26 |  |  |  |  |  |
| 18 | **Integracion Sprint 1 y 2** | 2011-10-03 16:00 → 2011-10-03 | 2011-10-03 21:00 → 2011-10-03 |  |  |  |  |  |
| 19 | Tests Sprint 1 y 2 | 2011-10-03 16:00 → 2011-10-03 | 2011-10-03 18:30 → 2011-10-03 |  |  |  |  |  |
| 20 | Correcciones Sprint 1 y 2 | 2011-10-03 18:30 → 2011-10-03 | 2011-10-03 21:00 → 2011-10-03 |  |  |  |  |  |
| 21 | End Sprint 2 | 2011-10-03 21:00 → 2011-10-03 | 2011-10-03 21:00 → 2011-10-03 |  |  |  |  |  |
| 22 | Sprint 3 Planning Meeting | 2011-10-03 21:00 → 2011-10-03 | 2011-10-03 22:00 → 2011-10-03 |  |  |  |  |  |
| 23 | **Sprint 3 - Miscellaneous** | 2011-10-17 16:00 → 2011-10-17 | 2011-10-24 19:00 → 2011-10-24 |  |  |  |  | was named Miscellaneous |
| 24 | Password recovery | 2011-10-17 16:00 → 2011-10-17 | 2011-10-24 19:00 → 2011-10-24 |  |  |  |  |  |
| 25 | Recommend to a friend | 2011-10-17 16:00 → 2011-10-17 | 2011-10-24 19:00 → 2011-10-24 |  |  |  |  | was named Recomment to a friend |
| 26 | **Integracion Sprint 3** | 2011-10-24 19:00 → 2011-10-24 | 2011-10-31 20:00 → 2011-10-31 |  |  |  |  |  |
| 27 | Tests Sprint 3 | 2011-10-24 19:00 → 2011-10-24 | 2011-10-31 16:30 → 2011-10-31 |  |  |  |  |  |
| 28 | Correcciones Sprint 3 | 2011-10-31 16:30 → 2011-10-31 | 2011-10-31 20:00 → 2011-10-31 |  |  |  |  |  |
| 29 | Release Meeting | 2011-10-31 20:00 → 2011-10-31 | 2011-10-31 22:00 → 2011-10-31 |  |  |  |  |  |
| 30 | Reserva Developers | 2011-11-07 16:00 → 2011-11-07 | 2011-11-14 22:00 → 2011-11-14 |  |  |  |  |  |
| 31 | Entrega Final (fin) | 2011-11-14 22:00 → 2011-11-14 | 2011-11-14 22:00 → 2011-11-14 |  |  |  |  | constraint finish no earlier than 2011-11-14 22:00 → finish no earlier than 2011-11-14 |
| 32 | **Management** | 2011-08-01 18:00 → 2011-08-01 A | 2011-11-14 22:00 → 2011-11-14 | 12.67d → 12.67d? | 0% → 18% |  |  |  |
| 33 | Project Management | 2011-08-01 18:00 → 2011-08-01 A | 2011-11-14 22:00 → 2011-11-14 |  | 0% → 15% |  |  |  |
| 34 | Reserva Manager 1 | 2011-08-01 18:00 → 2011-08-01 | 2011-11-14 22:00 → 2011-11-14 |  |  |  |  |  |
| 37 | Testing 1 | 2011-08-01 18:00 → 2011-08-29 (+28d) | 2011-11-14 22:00 → 2011-09-05 (-70d) | 8.67d → 1.33d |  |  | 2 → 36 | was named Testing |
| 42 | IT Support | 2011-08-01 18:00 → 2011-08-01 A | 2011-11-14 22:00 → 2011-11-14 |  | 0% → 60% |  |  |  |
| 43 | Project Status Tracking | 2011-08-01 18:00 → 2011-08-01 A | 2011-11-14 22:00 → 2011-11-14 |  | 0% → 31% |  |  |  |
| 44 | Team Meeting Planning | 2011-08-01 18:00 → 2011-08-01 | 2011-11-14 22:00 → 2011-11-14 |  |  |  |  |  |

## Version 3 (saved 2011-09-12, file Qnet - Cronograma - 12092011.mpp)

Note of the change: Documentos presentados el 12 de Septiembre

Last finish 2011-11-14 → 2011-12-12 (+28d). Complete tasks 2 → 3.

Changed:

| ID | Task | Start | Finish | Duration | Complete | Total float | Predecessors | Other |
| --- | --- | --- | --- | --- | --- | --- | --- | --- |
| 1 | **Qnet** | 2011-08-01 A → 2011-08-01 09:00 A | 2011-11-14 → 2011-12-12 17:00 (+28d) | 13d? → 16.17d? | 18% → 33% | 0d → 0.17d |  |  |
| 2 | Project start | 2011-08-01 → 2011-08-01 09:00 | 2011-08-01 → 2011-08-01 09:00 |  |  |  |  |  |
| 3 | **Setting enviroment** | 2011-08-01 A → 2011-08-01 16:00 A | 2011-09-05 → 2011-09-05 21:00 A |  | 78% → 100% | 0d → none |  |  |
| 4 | Asignacion de Recursos | 2011-08-01 A → 2011-08-01 16:00 A | 2011-08-01 A → 2011-08-01 18:00 A |  |  |  |  | resources dev 1; dev 2; dev 3 → Damin; Pablo; Martin |
| 5 | Capacitación | 2011-08-01 A → 2011-08-01 18:00 A | 2011-09-05 → 2011-09-05 21:00 A |  | 44% → 100% | 0d → none |  | resources dev 1; dev 2; dev 3 → Damin; Pablo; Martin |
| 6 | Set enviroment | 2011-08-08 A → 2011-08-08 16:00 A | 2011-08-29 A → 2011-08-29 22:00 A |  |  |  |  | constraint start no earlier than 2011-08-07 → start no earlier than 2011-08-07 16:00; resources dev 1; dev 2; dev 3 → Damin; Pablo; Martin |
| 7 | Sprint 1 y 2 Planning Meeting | 2011-09-05 → 2011-09-05 21:00 A | 2011-09-05 → 2011-09-05 22:00 |  | 0% → 50% | 0d → 3.17d |  | resources dev 1; dev 2; dev 3 → Damin; Pablo; Martin |
| 8 | **Sprint 1 - Privacy & Security** | 2011-09-12 → 2011-09-12 16:00 | 2011-09-12 → 2011-09-12 22:00 |  |  | 0d → 3.17d |  |  |
| 9 | **Privacy tasks** | 2011-09-12 → 2011-09-12 16:00 | 2011-09-12 → 2011-09-12 18:30 | 0.33d → 0.42d |  | 0d → 3.17d |  |  |
| 10 | Verify terms and conditions approval | 2011-09-12 → 2011-09-12 16:00 | 2011-09-12 → 2011-09-12 18:30 | 0.33d → 0.42d |  | 0d → 3.17d |  | resources dev 3 → Martin; Damin |
| 11 | **Security Improvements** | 2011-09-12 → 2011-09-12 16:00 | 2011-09-12 → 2011-09-12 22:00 |  |  | 0d → 3.17d |  |  |
| 12 | Sql injection check | 2011-09-12 → 2011-09-12 18:30 | 2011-09-12 → 2011-09-12 22:00 | 0.67d → 0.58d |  | 0d → 3.17d |  | resources dev 3 → Martin; Damin |
| 13 | Captcha check | 2011-09-12 → 2011-09-12 16:00 | 2011-09-12 → 2011-09-12 21:30 | 1d → 0.92d |  | 0d → 3.25d |  | resources dev 1; dev 2 → Pablo |
| 14 | End Sprint 1 | 2011-09-12 → 2011-09-12 22:00 | 2011-09-12 → 2011-09-12 22:00 |  |  | 0d → 3.33d |  |  |
| 15 | **Sprint 2 - Social improvements** | 2011-09-19 → 2011-09-19 16:00 | 2011-09-26 → 2011-09-26 22:00 |  |  | 0d → 3.17d |  |  |
| 16 | User popularity ranking | 2011-09-19 → 2011-09-19 16:00 | 2011-09-26 → 2011-09-26 22:00 |  |  | 0d → 3.17d |  | resources dev 2 → Pablo |
| 17 | Instant messages | 2011-09-19 → 2011-09-19 16:00 | 2011-09-26 → 2011-09-26 22:00 |  |  | 0d → 3.17d |  | resources dev 1; dev 3 → Damin; Martin |
| 18 | **Integracion Sprint 1 y 2** | 2011-10-03 → 2011-10-03 16:00 | 2011-10-03 → 2011-10-03 21:00 |  |  | 0d → 3.17d |  |  |
| 19 | Tests Sprint 1 y 2 | 2011-10-03 → 2011-10-03 16:00 | 2011-10-03 → 2011-10-03 18:30 |  |  | 0d → 3.17d |  | resources dev 3; dev 1; dev 2 → Martin; Damin; Pablo |
| 20 | Correcciones Sprint 1 y 2 | 2011-10-03 → 2011-10-03 18:30 | 2011-10-03 → 2011-10-03 21:00 |  |  | 0d → 3.17d |  | resources dev 3; dev 1; dev 2 → Martin; Damin; Pablo |
| 21 | End Sprint 2 | 2011-10-03 → 2011-10-03 21:00 | 2011-10-03 → 2011-10-03 21:00 |  |  |  |  |  |
| 22 | Sprint 3 Planning Meeting | 2011-10-03 → 2011-10-03 21:00 | 2011-10-03 → 2011-10-03 22:00 |  |  | 0d → 3.33d |  | resources dev 3; dev 1; dev 2 → Martin; Damin; Pablo |
| 23 | **Sprint 3 - Miscellaneous** | 2011-10-17 → 2011-10-17 16:00 | 2011-10-24 → 2011-10-24 19:00 |  |  | 0d → 3.17d |  |  |
| 24 | Password recovery | 2011-10-17 → 2011-10-17 16:00 | 2011-10-24 → 2011-10-24 19:00 |  |  | 0d → 3.33d |  | resources dev 1 → Damin |
| 25 | Recommend to a friend | 2011-10-17 → 2011-10-17 16:00 | 2011-10-24 → 2011-10-24 19:00 |  |  | 0d → 3.33d |  | resources dev 2; dev 3 → Pablo; Martin |
| 26 | **Integracion Sprint 3** | 2011-10-24 → 2011-10-24 19:00 | 2011-10-31 → 2011-10-31 20:00 |  |  | 0d → 3.17d |  |  |
| 27 | Tests Sprint 3 | 2011-10-24 → 2011-10-24 19:00 | 2011-10-31 → 2011-10-31 16:30 |  |  | 0d → 3.33d |  | resources dev 1; dev 2; dev 3 → Damin; Pablo; Martin |
| 28 | Correcciones Sprint 3 | 2011-10-31 → 2011-10-31 16:30 | 2011-10-31 → 2011-10-31 20:00 |  |  | 0d → 3.33d |  | resources dev 1; dev 2; dev 3 → Damin; Pablo; Martin |
| 29 | Release Meeting | 2011-10-31 → 2011-10-31 20:00 | 2011-10-31 → 2011-10-31 22:00 |  |  | 0d → 3.33d |  | resources dev 1; dev 2; dev 3 → Damin; Pablo; Martin |
| 30 | Reserva Developers | 2011-11-07 → 2011-11-07 16:00 | 2011-11-14 → 2011-11-14 22:00 |  |  | 0d → 3.33d |  | resources dev 1; dev 2; dev 3 → Damin; Pablo; Martin |
| 31 | Entrega Final (fin) | 2011-11-14 → 2011-11-14 22:00 | 2011-11-14 → 2011-11-14 22:00 |  |  | 0d → 3.33d |  | constraint finish no earlier than 2011-11-14 → finish no earlier than 2011-11-14 22:00 |
| 32 | **Management** | 2011-08-01 A → 2011-08-01 18:00 A | 2011-11-14 → 2011-12-12 17:00 (+28d) | 12.67d? → 15.83d? | 18% → 36% |  |  |  |
| 33 | Project Management | 2011-08-01 A → 2011-08-01 18:00 A | 2011-11-14 → 2011-11-14 22:00 |  | 15% → 30% | 0d → 3.17d |  |  |
| 34 | Reserva Manager 1 | 2011-08-01 → 2011-08-01 18:00 A | 2011-11-14 → 2011-11-14 22:00 |  | 0% → 11% | 0d → 3.17d |  |  |
| 35 | **Testing** | 2011-08-01 → 2011-09-05 21:00 A (+35d) | 2011-11-14 → 2011-12-12 17:00 (+28d) | 12.67d? → 12.33d? | 0% → 10% |  | 2 → 3 |  |
| 36 | Definición de casos de prueba 1 | 2011-08-01 → 2011-09-05 21:00 A (+35d) | 2011-08-08 → 2011-09-19 21:00 (+42d) |  | 0% → 62% |  |  |  |
| 37 | Testing 1 | 2011-08-29 → 2011-09-19 21:00 (+21d) | 2011-09-05 → 2011-10-03 21:00 (+28d) |  |  |  |  |  |
| 38 | Definición de casos de prueba 2 | 2011-09-12 → 2011-10-03 21:00 (+21d) | 2011-09-26 → 2011-10-24 22:00 (+28d) |  |  |  |  |  |
| 39 | Testing 2 | 2011-09-26 → 2011-10-31 18:00 (+35d) | 2011-10-17 → 2011-11-14 19:00 (+28d) |  |  |  |  |  |
| 40 | Definición de casos de prueba 3 | 2011-10-17 → 2011-11-14 19:00 (+28d) | 2011-10-31 → 2011-11-28 20:00 (+28d) |  |  |  |  |  |
| 41 | Testing 3 | 2011-10-31 → 2011-11-28 20:00 (+28d) | 2011-11-14 → 2011-12-12 17:00 (+28d) |  |  |  |  |  |
| 42 | IT Support | 2011-08-01 A → 2011-08-01 18:00 A | 2011-11-14 → 2011-11-14 22:00 |  | 60% → 88% | 0d → 3.17d |  |  |
| 43 | Project Status Tracking | 2011-08-01 A → 2011-08-01 18:00 A | 2011-11-14 → 2011-11-14 22:00 |  | 31% → 45% | 0d → 3.17d |  |  |
| 44 | Team Meeting Planning | 2011-08-01 → 2011-08-01 18:00 A | 2011-11-14 → 2011-11-14 22:00 |  | 0% → 33% | 0d → 3.17d |  |  |

## Version 4 (saved 2011-09-26, file Qnet-Cronograma-26092011.mpp)

Note of the change: Cronograma actualizado

Last finish stays 2011-12-12. Complete tasks 3 → 7.

Changed:

| ID | Task | Start | Finish | Duration | Complete | Total float | Other |
| --- | --- | --- | --- | --- | --- | --- | --- |
| 1 | **Qnet** | 2011-08-01 09:00 A → 2011-08-01 A | 2011-12-12 17:00 → 2011-12-12 |  | 33% → 41% |  |  |
| 2 | Project start | 2011-08-01 09:00 → 2011-08-01 | 2011-08-01 09:00 → 2011-08-01 |  |  |  |  |
| 3 | **Setting enviroment** | 2011-08-01 16:00 A → 2011-08-01 A | 2011-09-05 21:00 A → 2011-09-05 A |  |  |  |  |
| 4 | Asignacion de Recursos | 2011-08-01 16:00 A → 2011-08-01 A | 2011-08-01 18:00 A → 2011-08-01 A |  |  |  |  |
| 5 | Capacitación | 2011-08-01 18:00 A → 2011-08-01 A | 2011-09-05 21:00 A → 2011-09-05 A |  |  |  |  |
| 6 | Set enviroment | 2011-08-08 16:00 A → 2011-08-08 A | 2011-08-29 22:00 A → 2011-08-29 A |  |  |  | constraint start no earlier than 2011-08-07 16:00 → start no earlier than 2011-08-07 |
| 7 | Sprint 1 y 2 Planning Meeting | 2011-09-05 21:00 A → 2011-09-05 A | 2011-09-05 22:00 → 2011-09-05 |  |  | 3.17d → 12.17d |  |
| 8 | **Sprint 1 - Privacy & Security** | 2011-09-12 16:00 → 2011-09-12 A | 2011-09-12 22:00 → 2011-09-19 A (+7d) | 1d → 1.08d | 0% → 100% | 3.17d → none |  |
| 9 | **Privacy tasks** | 2011-09-12 16:00 → 2011-09-12 A | 2011-09-12 18:30 → 2011-09-12 A | 0.42d → 0.33d | 0% → 100% | 3.17d → none |  |
| 10 | Verify terms and conditions approval | 2011-09-12 16:00 → 2011-09-12 A | 2011-09-12 18:30 → 2011-09-12 A | 0.42d → 0.33d | 0% → 100% | 3.17d → none |  |
| 11 | **Security Improvements** | 2011-09-12 16:00 → 2011-09-12 A | 2011-09-12 22:00 → 2011-09-19 A (+7d) | 1d → 1.08d | 0% → 100% | 3.17d → none |  |
| 12 | Sql injection check | 2011-09-12 18:30 → 2011-09-12 A | 2011-09-12 22:00 → 2011-09-12 A | 0.58d → 0.42d | 0% → 100% | 3.17d → none |  |
| 13 | Captcha check | 2011-09-12 16:00 → 2011-09-12 A | 2011-09-12 21:30 → 2011-09-19 A (+7d) | 0.92d → 1.08d | 0% → 100% | 3.25d → none |  |
| 14 | End Sprint 1 | 2011-09-12 22:00 → 2011-09-19 (+7d) | 2011-09-12 22:00 → 2011-09-19 (+7d) |  |  | 3.33d → 0d |  |
| 15 | **Sprint 2 - Social improvements** | 2011-09-19 16:00 → 2011-09-19 A | 2011-09-26 22:00 → 2011-10-03 (+7d) |  | 0% → 50% | 3.17d → 3.08d |  |
| 16 | User popularity ranking | 2011-09-19 16:00 → 2011-09-19 A | 2011-09-26 22:00 → 2011-10-03 (+7d) |  | 0% → 50% | 3.17d → 3.08d |  |
| 17 | Instant messages | 2011-09-19 16:00 → 2011-09-19 A | 2011-09-26 22:00 → 2011-10-03 (+7d) |  | 0% → 50% | 3.17d → 3.08d |  |
| 18 | **Integracion Sprint 1 y 2** | 2011-10-03 16:00 → 2011-10-03 | 2011-10-03 21:00 → 2011-10-03 |  |  | 3.17d → 3.08d |  |
| 19 | Tests Sprint 1 y 2 | 2011-10-03 16:00 → 2011-10-03 | 2011-10-03 18:30 → 2011-10-03 |  |  | 3.17d → 3.08d |  |
| 20 | Correcciones Sprint 1 y 2 | 2011-10-03 18:30 → 2011-10-03 | 2011-10-03 21:00 → 2011-10-03 |  |  | 3.17d → 3.08d |  |
| 21 | End Sprint 2 | 2011-10-03 21:00 → 2011-10-03 | 2011-10-03 21:00 → 2011-10-03 |  |  | 5.17d → 5.08d |  |
| 22 | Sprint 3 Planning Meeting | 2011-10-03 21:00 → 2011-10-03 | 2011-10-03 22:00 → 2011-10-17 (+14d) |  |  | 3.33d → 3.25d |  |
| 23 | **Sprint 3 - Miscellaneous** | 2011-10-17 16:00 → 2011-10-17 | 2011-10-24 19:00 → 2011-10-24 |  |  | 3.17d → 3.08d |  |
| 24 | Password recovery | 2011-10-17 16:00 → 2011-10-17 | 2011-10-24 19:00 → 2011-10-24 |  |  | 3.33d → 3.25d |  |
| 25 | Recommend to a friend | 2011-10-17 16:00 → 2011-10-17 | 2011-10-24 19:00 → 2011-10-24 |  |  | 3.33d → 3.25d |  |
| 26 | **Integracion Sprint 3** | 2011-10-24 19:00 → 2011-10-24 | 2011-10-31 20:00 → 2011-10-31 |  |  | 3.17d → 3.08d |  |
| 27 | Tests Sprint 3 | 2011-10-24 19:00 → 2011-10-24 | 2011-10-31 16:30 → 2011-10-31 |  |  | 3.33d → 3.25d |  |
| 28 | Correcciones Sprint 3 | 2011-10-31 16:30 → 2011-10-31 | 2011-10-31 20:00 → 2011-10-31 |  |  | 3.33d → 3.25d |  |
| 29 | Release Meeting | 2011-10-31 20:00 → 2011-10-31 | 2011-10-31 22:00 → 2011-11-07 (+7d) |  |  | 3.33d → 3.25d |  |
| 30 | Reserva Developers | 2011-11-07 16:00 → 2011-11-07 | 2011-11-14 22:00 → 2011-11-21 (+7d) |  |  | 3.33d → 3.25d |  |
| 31 | Entrega Final (fin) | 2011-11-14 22:00 → 2011-11-21 (+7d) | 2011-11-14 22:00 → 2011-11-21 (+7d) |  |  | 3.33d → 3.25d | constraint finish no earlier than 2011-11-14 22:00 → finish no earlier than 2011-11-14 |
| 32 | **Management** | 2011-08-01 18:00 A → 2011-08-01 A | 2011-12-12 17:00 → 2011-12-12 |  | 36% → 39% |  |  |
| 33 | Project Management | 2011-08-01 18:00 A → 2011-08-01 A | 2011-11-14 22:00 → 2011-10-31 (-14d) | 8.67d → 6.97d | 30% → 37% | 3.17d → 5.53d |  |
| 34 | Reserva Manager 1 | 2011-08-01 18:00 A → 2011-08-01 A | 2011-11-14 22:00 → 2011-11-14 |  |  |  |  |
| 35 | **Testing** | 2011-09-05 21:00 A → 2011-09-05 A | 2011-12-12 17:00 → 2011-12-12 |  |  |  |  |
| 36 | Definición de casos de prueba 1 | 2011-09-05 21:00 A → 2011-09-05 A | 2011-09-19 21:00 → 2011-09-19 |  |  |  |  |
| 37 | Testing 1 | 2011-09-19 21:00 → 2011-09-19 | 2011-10-03 21:00 → 2011-10-03 |  |  |  |  |
| 38 | Definición de casos de prueba 2 | 2011-10-03 21:00 → 2011-10-03 | 2011-10-24 22:00 → 2011-10-24 |  |  |  |  |
| 39 | Testing 2 | 2011-10-31 18:00 → 2011-10-31 | 2011-11-14 19:00 → 2011-11-14 |  |  |  |  |
| 40 | Definición de casos de prueba 3 | 2011-11-14 19:00 → 2011-11-14 | 2011-11-28 20:00 → 2011-11-28 |  |  |  |  |
| 41 | Testing 3 | 2011-11-28 20:00 → 2011-11-28 | 2011-12-12 17:00 → 2011-12-12 |  |  |  |  |
| 42 | IT Support | 2011-08-01 18:00 A → 2011-08-01 A | 2011-11-14 22:00 → 2011-11-14 A | 8.67d → 8.46d | 88% → 100% | 3.17d → none |  |
| 43 | Project Status Tracking | 2011-08-01 18:00 A → 2011-08-01 A | 2011-11-14 22:00 → 2011-11-14 |  |  |  |  |
| 44 | Team Meeting Planning | 2011-08-01 18:00 A → 2011-08-01 A | 2011-11-14 22:00 → 2011-11-14 |  |  |  |  |

## Version 5 (saved 2011-09-26, file Qnet-Cronograma-26092011.mpp)

Note of the change: Cronograma actualizado

Last finish stays 2011-12-12. Complete tasks 7 → 8.

Changed:

| ID | Task | Finish | Complete | Total float |
| --- | --- | --- | --- | --- |
| 32 | **Management** |  | 39% → 40% |  |
| 35 | **Testing** |  | 10% → 15% |  |
| 36 | Definición de casos de prueba 1 | 2011-09-19 A | 62% → 100% | 0d → none |

## Version 6 (saved 2011-09-26, file Qnet-Cronograma-26092011.mpp)

Note of the change: proyect updated

Last finish stays 2011-12-12.

Changed:

| ID | Task | Start | Complete |
| --- | --- | --- | --- |
| 1 | **Qnet** |  | 41% → 40% |
| 15 | **Sprint 2 - Social improvements** |  | 50% → 25% |
| 17 | Instant messages | 2011-09-19 A → 2011-09-19 | 50% → 0% |
